# ProjetoXPTO

How a schedule from MS Project changed from version to version. A marks actual dates.

## Version 1 (saved 2025-06-27, file ProjetoXPTO.mpp)

| ID | WBS | Task | Duration | Start | Finish | Predecessors | Total float |
| --- | --- | --- | --- | --- | --- | --- | --- |
| 1 | 1 | **Iniciação** | 2d | 2025-05-06 | 2025-05-07 |  | 0d |
| 2 |  | Elaborar Termo de Abertura do projeto | 2d | 2025-05-06 | 2025-05-07 |  | 0d |
| 3 |  | Aprovar termo de abertura do projeto | 2d | 2025-05-06 | 2025-05-07 | 2SS | 0d |
| 4 | 2 | **Planejamento** | 9d | 2025-05-08 | 2025-05-20 | 1 | 0d |
| 5 |  | Elaborar o Plano de Projeto | 1d | 2025-05-08 | 2025-05-08 |  | 0d |
| 6 |  | Aprovar o Plano de Projeto | 1d | 2025-05-09 | 2025-05-09 | 5 | 0d |
| 7 |  | Realizar reunião Kick off | 1d | 2025-05-12 | 2025-05-12 | 6 | 0d |
| 8 |  | Preparar estrutura para a equipe | 3d | 2025-05-13 | 2025-05-15 | 7 | 0d |
| 9 |  | Realizar contratações | 2d | 2025-05-16 | 2025-05-19 | 8 | 0d |
| 10 |  | Elaborar e priorizar o Backlog do Produto (Product Backlog) | 1d | 2025-05-20 | 2025-05-20 | 9 | 0d |
| 11 | 3 | **Execução de Controle** | 23d | 2025-05-21 | 2025-06-20 |  | 0d |
| 12 | 3.1 | **Sprint 1** | 9d | 2025-05-21 | 2025-06-02 | 4 | 0d |
| 13 |  | Planejar a Sprint (Sprint Planning) | 1d | 2025-05-21 | 2025-05-21 |  | 0d |
| 14 |  | Executar a sprint | 7d | 2025-05-22 | 2025-05-30 | 13 | 0d |
| 15 |  | Revisão da Sprint (Sprint Review) | 4h | 2025-06-02 | 2025-06-02 | 14 | 0d |
| 16 |  | Retrospectiva da Sprint (Sprint Retrospective) | 4h | 2025-06-02 | 2025-06-02 | 15 | 0d |
| 17 | 3.2 | **Sprint 2** | 7d | 2025-06-03 | 2025-06-11 | 12 | 0d |
| 18 |  | Planejar a Sprint (Sprint Planning) | 1d | 2025-06-03 | 2025-06-03 |  | 6d |
| 19 |  | Executar a sprint | 7d | 2025-06-03 | 2025-06-11 |  | 0d |
| 20 |  | Revisão da Sprint (Sprint Review) | 4h | 2025-06-03 | 2025-06-03 |  | 7.5d |
| 21 |  | Retrospectiva da Sprint (Sprint Retrospective) | 4h | 2025-06-03 | 2025-06-03 |  | 7.5d |
| 22 | 3.3 | **Sprint 3** | 6d | 2025-06-12 | 2025-06-19 | 17 | 1d |
| 23 |  | Planejar a Sprint (Sprint Planning) | 1d | 2025-06-12 | 2025-06-12 |  | 6d |
| 24 |  | Executar a sprint | 6d | 2025-06-12 | 2025-06-19 |  | 1d |
| 25 |  | Revisão da Sprint (Sprint Review) | 4h | 2025-06-12 | 2025-06-12 |  | 6.5d |
| 26 |  | Retrospectiva da Sprint (Sprint Retrospective) | 4h | 2025-06-12 | 2025-06-12 |  | 6.5d |
| 27 | 3.4 | **Sprint 4** | 7d | 2025-06-04 | 2025-06-12 | 18 | 6d |
| 28 |  | Planejar a Sprint (Sprint Planning) | 1d | 2025-06-04 | 2025-06-04 |  | 12d |
| 29 |  | Executar a sprint | 7d | 2025-06-04 | 2025-06-12 |  | 6d |
| 30 |  | Revisão da Sprint (Sprint Review) | 4h | 2025-06-04 | 2025-06-04 |  | 12.5d |
| 31 |  | Retrospectiva da Sprint (Sprint Retrospective) | 4h | 2025-06-04 | 2025-06-04 |  | 12.5d |
| 32 | 3.5 | **Sprint 5** | 7d | 2025-06-12 | 2025-06-20 | 19 | 0d |
| 33 |  | Planejar a Sprint (Sprint Planning) | 1d | 2025-06-12 | 2025-06-12 |  | 6d |
| 34 |  | Executar a sprint | 7d | 2025-06-12 | 2025-06-20 |  | 0d |
| 35 |  | Revisão da Sprint (Sprint Review) | 4h | 2025-06-12 | 2025-06-12 |  | 6.5d |
| 36 |  | Retrospectiva da Sprint (Sprint Retrospective) | 4h | 2025-06-12 | 2025-06-12 |  | 6.5d |
| 37 | 4 | **Controle** | 1d? | 2025-05-06 | 2025-05-06 |  | 33d |
| 38 | 4.1 | **Comunicação** | 1d? | 2025-05-06 | 2025-05-06 |  | 33d |
| 39 |  | Revisar o plano de comunicação 1 | 1d? | 2025-05-06 | 2025-05-06 |  | 33d |
| 40 |  | Revisar o plano de comunicação 2 | 1d? | 2025-05-06 | 2025-05-06 |  | 33d |
| 41 |  | Revisar o plano de comunicação 3 | 1d? | 2025-05-06 | 2025-05-06 |  | 33d |
| 42 |  | Revisar o plano de comunicação 4 | 1d? | 2025-05-06 | 2025-05-06 |  | 33d |
| 43 |  | Revisar o plano de comunicação 5 | 1d? | 2025-05-06 | 2025-05-06 |  | 33d |
| 44 |  | Revisar o plano de comunicação 6 | 1d? | 2025-05-06 | 2025-05-06 |  | 33d |
| 45 |  | Revisar o plano de comunicação 7 | 1d? | 2025-05-06 | 2025-05-06 |  | 33d |
| 46 |  | Revisar o plano de comunicação 8 | 1d? | 2025-05-06 | 2025-05-06 |  | 33d |
| 47 |  | Revisar o plano de comunicação 9 | 1d? | 2025-05-06 | 2025-05-06 |  | 33d |
| 48 |  | Revisar o plano de comunicação 10 | 1d? | 2025-05-06 | 2025-05-06 |  | 33d |
| 49 |  | Revisar o plano de comunicação 11 | 1d? | 2025-05-06 | 2025-05-06 |  | 33d |
| 50 |  | Revisar o plano de comunicação 12 | 1d? | 2025-05-06 | 2025-05-06 |  | 33d |
| 51 | 4.2 | **Tempo** | 1d? | 2025-05-06 | 2025-05-06 |  | 33d |
| 52 |  | Revisar o cronograma 1 | 1d? | 2025-05-06 | 2025-05-06 |  | 33d |
| 53 |  | Revisar o cronograma 2 | 1d? | 2025-05-06 | 2025-05-06 |  | 33d |
| 54 |  | Revisar o cronograma 3 | 1d? | 2025-05-06 | 2025-05-06 |  | 33d |
| 55 |  | Revisar o cronograma 4 | 1d? | 2025-05-06 | 2025-05-06 |  | 33d |
| 56 |  | Revisar o cronograma 5 | 1d? | 2025-05-06 | 2025-05-06 |  | 33d |
| 57 |  | Revisar o cronograma 6 | 1d? | 2025-05-06 | 2025-05-06 |  | 33d |
| 58 |  | Revisar o cronograma 7 | 1d? | 2025-05-06 | 2025-05-06 |  | 33d |
| 59 |  | Revisar o cronograma 8 | 1d? | 2025-05-06 | 2025-05-06 |  | 33d |
| 60 |  | Revisar o cronograma 9 | 1d? | 2025-05-06 | 2025-05-06 |  | 33d |
| 61 |  | Revisar o cronograma 10 | 1d? | 2025-05-06 | 2025-05-06 |  | 33d |
| 62 |  | Revisar o cronograma 11 | 1d? | 2025-05-06 | 2025-05-06 |  | 33d |
| 63 |  | Revisar o cronograma 12 | 1d? | 2025-05-06 | 2025-05-06 |  | 33d |
| 64 | 4.3 | **Riscos** | 1d? | 2025-05-06 | 2025-05-06 |  | 33d |
| 65 |  | Revisar o plano de riscos 1 | 1d? | 2025-05-06 | 2025-05-06 |  | 33d |
| 66 |  | Revisar o plano de riscos 2 | 1d? | 2025-05-06 | 2025-05-06 |  | 33d |
| 67 |  | Revisar o plano de riscos 3 | 1d? | 2025-05-06 | 2025-05-06 |  | 33d |
| 68 |  | Revisar o plano de riscos 4 | 1d? | 2025-05-06 | 2025-05-06 |  | 33d |
| 69 |  | Revisar o plano de riscos 5 | 1d? | 2025-05-06 | 2025-05-06 |  | 33d |
| 70 |  | Revisar o plano de riscos 6 | 1d? | 2025-05-06 | 2025-05-06 |  | 33d |

| ID | WBS | Task | Duration | Start | Finish | Total float |
| --- | --- | --- | --- | --- | --- | --- |
| 71 |  | Revisar o plano de riscos 7 | 1d? | 2025-05-06 | 2025-05-06 | 33d |
| 72 |  | Revisar o plano de riscos 8 | 1d? | 2025-05-06 | 2025-05-06 | 33d |
| 73 |  | Revisar o plano de riscos 9 | 1d? | 2025-05-06 | 2025-05-06 | 33d |
| 74 |  | Revisar o plano de riscos 10 | 1d? | 2025-05-06 | 2025-05-06 | 33d |
| 75 |  | Revisar o plano de riscos 11 | 1d? | 2025-05-06 | 2025-05-06 | 33d |
| 76 |  | Revisar o plano de riscos 12 | 1d? | 2025-05-06 | 2025-05-06 | 33d |
| 77 | 5 | **Encerramento** | 1d | 2025-05-06 | 2025-05-06 | 33d |
| 78 |  | Elaborar o Termo de Encerramento do Projeto | 1d | 2025-05-06 | 2025-05-06 | 33d |
| 79 |  | Aprovar o Termo de Encerramento do Projeto | 1d | 2025-05-06 | 2025-05-06 | 33d |

## Version 2 (data date 2025-07-04, saved 2025-07-04, file ProjetoXPTOV1.mpp)

Last finish 2025-06-20 → 2025-07-22 (+32d). Complete tasks 0 → 21.

Added:

| ID | Task | Duration | Start | Finish | Constraint | Resources |
| --- | --- | --- | --- | --- | --- | --- |
| 12 | **Execução** | 44d | 2025-05-21 A | 2025-07-21 |  |  |
| 40 | **Revisar cronograma** | 41d | 2025-05-26 | 2025-07-21 |  |  |
| 41 | Revisar cronograma 1 | 1d | 2025-05-26 | 2025-05-26 | start no earlier than 2025-05-26 | Gerente do projeto |
| 42 | Revisar cronograma 2 | 1d | 2025-06-02 | 2025-06-02 | start no earlier than 2025-06-02 | Gerente do projeto |
| 43 | Revisar cronograma 3 | 1d | 2025-06-09 | 2025-06-09 | start no earlier than 2025-06-09 | Gerente do projeto |
| 44 | Revisar cronograma 4 | 1d | 2025-06-16 | 2025-06-16 | start no earlier than 2025-06-16 | Gerente do projeto |
| 45 | Revisar cronograma 5 | 1d | 2025-06-23 | 2025-06-23 | start no earlier than 2025-06-23 | Gerente do projeto |
| 46 | Revisar cronograma 6 | 1d | 2025-06-30 | 2025-06-30 | start no earlier than 2025-06-30 | Gerente do projeto |
| 47 | Revisar cronograma 7 | 1d | 2025-07-07 | 2025-07-07 | start no earlier than 2025-07-07 | Gerente do projeto |
| 48 | Revisar cronograma 8 | 1d | 2025-07-14 | 2025-07-14 | start no earlier than 2025-07-14 | Gerente do projeto |
| 49 | Revisar cronograma 9 | 1d | 2025-07-21 | 2025-07-21 | start no earlier than 2025-07-21 | Gerente do projeto |
| 51 | **Revisar plano de comunicação** | 41d | 2025-05-27 | 2025-07-22 |  |  |
| 52 | Revisar plano de comunicação 1 | 1d | 2025-05-27 | 2025-05-27 | start no earlier than 2025-05-27 | Gerente do projeto |
| 53 | Revisar plano de comunicação 2 | 1d | 2025-06-03 | 2025-06-03 | start no earlier than 2025-06-03 | Gerente do projeto |
| 54 | Revisar plano de comunicação 3 | 1d | 2025-06-10 | 2025-06-10 | start no earlier than 2025-06-10 | Gerente do projeto |
| 55 | Revisar plano de comunicação 4 | 1d | 2025-06-17 | 2025-06-17 | start no earlier than 2025-06-17 | Gerente do projeto |
| 56 | Revisar plano de comunicação 5 | 1d | 2025-06-24 | 2025-06-24 | start no earlier than 2025-06-24 | Gerente do projeto |
| 57 | Revisar plano de comunicação 6 | 1d | 2025-07-01 | 2025-07-01 | start no earlier than 2025-07-01 | Gerente do projeto |
| 58 | Revisar plano de comunicação 7 | 1d | 2025-07-08 | 2025-07-08 | start no earlier than 2025-07-08 | Gerente do projeto |
| 59 | Revisar plano de comunicação 8 | 1d | 2025-07-15 | 2025-07-15 | start no earlier than 2025-07-15 | Gerente do projeto |
| 60 | Revisar plano de comunicação 9 | 1d | 2025-07-22 | 2025-07-22 | start no earlier than 2025-07-22 | Gerente do projeto |
| 62 | **Revisar plano de gerenciamento de riscos** | 41d | 2025-05-21 | 2025-07-16 |  |  |
| 63 | Revisar plano de gerenciamento de riscos 1 | 1d | 2025-05-21 | 2025-05-21 | start no earlier than 2025-05-21 | Gerente do projeto |
| 64 | Revisar plano de gerenciamento de riscos 2 | 1d | 2025-05-28 | 2025-05-28 | start no earlier than 2025-05-28 | Gerente do projeto |
| 65 | Revisar plano de gerenciamento de riscos 3 | 1d | 2025-06-04 | 2025-06-04 | start no earlier than 2025-06-04 | Gerente do projeto |
| 66 | Revisar plano de gerenciamento de riscos 4 | 1d | 2025-06-11 | 2025-06-11 | start no earlier than 2025-06-11 | Gerente do projeto |
| 67 | Revisar plano de gerenciamento de riscos 5 | 1d | 2025-06-18 | 2025-06-18 | start no earlier than 2025-06-18 | Gerente do projeto |
| 68 | Revisar plano de gerenciamento de riscos 6 | 1d | 2025-06-25 | 2025-06-25 | start no earlier than 2025-06-25 | Gerente do projeto |
| 69 | Revisar plano de gerenciamento de riscos 7 | 1d | 2025-07-02 | 2025-07-02 | start no earlier than 2025-07-02 | Gerente do projeto |
| 70 | Revisar plano de gerenciamento de riscos 8 | 1d | 2025-07-09 | 2025-07-09 | start no earlier than 2025-07-09 | Gerente do projeto |
| 71 | Revisar plano de gerenciamento de riscos 9 | 1d | 2025-07-16 | 2025-07-16 | start no earlier than 2025-07-16 | Gerente do projeto |

Removed: 39 Revisar o plano de comunicação 1; 40 Revisar o plano de comunicação 2; 41 Revisar o plano de comunicação 3; 42 Revisar o plano de comunicação 4; 43 Revisar o plano de comunicação 5; 44 Revisar o plano de comunicação 6; 45 Revisar o plano de comunicação 7; 46 Revisar o plano de comunicação 8; 47 Revisar o plano de comunicação 9; 48 Revisar o plano de comunicação 10; 49 Revisar o plano de comunicação 11; 50 Revisar o plano de comunicação 12; 52 Revisar o cronograma 1; 53 Revisar o cronograma 2; 54 Revisar o cronograma 3; 55 Revisar o cronograma 4; 56 Revisar o cronograma 5; 57 Revisar o cronograma 6; 58 Revisar o cronograma 7; 59 Revisar o cronograma 8; 60 Revisar o cronograma 9; 61 Revisar o cronograma 10; 62 Revisar o cronograma 11; 63 Revisar o cronograma 12; 65 Revisar o plano de riscos 1; 66 Revisar o plano de riscos 2; 67 Revisar o plano de riscos 3; 68 Revisar o plano de riscos 4; 69 Revisar o plano de riscos 5; 70 Revisar o plano de riscos 6; 71 Revisar o plano de riscos 7; 72 Revisar o plano de riscos 8; 73 Revisar o plano de riscos 9; 74 Revisar o plano de riscos 10; 75 Revisar o plano de riscos 11; 76 Revisar o plano de riscos 12

Changed:

| ID | Task | Start | Finish | Duration | Complete | Total float | Predecessors | Other |
| --- | --- | --- | --- | --- | --- | --- | --- | --- |
| 1 | **Iniciação** | 2025-05-06 A | 2025-05-07 A |  | 0% → 100% | 0d → none |  | baseline start none → 2025-05-06; baseline finish none → 2025-05-07 |
| 2 | Elaborar Termo de Abertura do projeto | 2025-05-06 A | 2025-05-07 A |  | 0% → 100% | 0d → none |  | baseline start none → 2025-05-06; baseline finish none → 2025-05-07 |
| 3 | Aprovar termo de abertura do projeto | 2025-05-06 A | 2025-05-07 A |  | 0% → 100% | 0d → none |  | baseline start none → 2025-05-06; baseline finish none → 2025-05-07 |
| 4 | **Planejamento** | 2025-05-08 A | 2025-05-20 A |  | 0% → 100% | 0d → none |  | baseline start none → 2025-05-08; baseline finish none → 2025-05-20 |
| 5 | Elaborar o Plano de Projeto | 2025-05-08 A | 2025-05-08 A |  | 0% → 100% | 0d → none |  | resources Gerente de projeto → Gerente do projeto; baseline start none → 2025-05-08; baseline finish none → 2025-05-08 |
| 6 | Aprovar o Plano de Projeto | 2025-05-09 A | 2025-05-09 A |  | 0% → 100% | 0d → none |  | resources Gerente de projeto; Patrocinador → Patrocinador; Gerente do projeto; baseline start none → 2025-05-09; baseline finish none → 2025-05-09 |
| 7 | Realizar reunião Kick off | 2025-05-12 A | 2025-05-12 A |  | 0% → 100% | 0d → none |  | resources Desenvolvedor Frontend; Desenvolvedor Java Pleno; Desenvolvedor Java Senior; Gerente de projeto; Patrocinador; Scrum Master; UX Designer; Product Owner → Desenvolvedor Frontend; Desenvolvedor Java Pleno; Desenvolvedor Java Senior; Patrocinador; Scrum Master; UX Designer; Product Owner; Gerente do projeto; baseline start none → 2025-05-12; baseline finish none → 2025-05-12 |
| 8 | Preparar estrutura para a equipe | 2025-05-13 A | 2025-05-15 A |  | 0% → 100% | 0d → none |  | resources Gerente de projeto → Gerente do projeto; baseline start none → 2025-05-13; baseline finish none → 2025-05-15 |
| 9 | Realizar contratações | 2025-05-16 A | 2025-05-19 A |  | 0% → 100% | 0d → none |  | resources Gerente de projeto → Gerente do projeto; baseline start none → 2025-05-16; baseline finish none → 2025-05-19 |
| 10 | Elaborar e priorizar o Backlog do Produto (Product Backlog) | 2025-05-20 A | 2025-05-20 A |  | 0% → 100% | 0d → none |  | resources Gerente de projeto; Product Owner → Product Owner; Gerente do projeto; baseline start none → 2025-05-20; baseline finish none → 2025-05-20 |
| 11 | **Execução de Controle** | 2025-05-21 A | 2025-06-20 → 2025-07-22 (+32d) | 23d → 45d | 0% → 45% |  |  | baseline start none → 2025-05-21; baseline finish none → 2025-07-22 |
| 13 | **Sprint 1** | 2025-05-21 A | 2025-06-02 A |  | 0% → 100% | 0d → none |  | baseline start none → 2025-05-21; baseline finish none → 2025-06-02 |
| 14 | Planejar a Sprint (Sprint Planning) | 2025-05-21 A | 2025-05-21 A |  | 0% → 100% | 0d → none |  | resources Desenvolvedor Frontend; Desenvolvedor Java Pleno; Desenvolvedor Java Senior; Gerente de projeto; Product Owner; Scrum Master; UX Designer → Desenvolvedor Frontend; Desenvolvedor Java Pleno; Desenvolvedor Java Senior; Product Owner; Scrum Master; UX Designer; Gerente do projeto; baseline start none → 2025-05-21; baseline finish none → 2025-05-21 |
| 15 | Executar a sprint | 2025-05-22 A | 2025-05-30 A |  | 0% → 100% | 0d → none |  | resources Desenvolvedor Frontend; Desenvolvedor Java Pleno; Desenvolvedor Java Senior; Gerente de projeto; Scrum Master; UX Designer → Desenvolvedor Frontend; Desenvolvedor Java Pleno; Desenvolvedor Java Senior; Scrum Master; UX Designer; Gerente do projeto; baseline start none → 2025-05-22; baseline finish none → 2025-05-30 |
| 16 | Revisão da Sprint (Sprint Review) | 2025-06-02 A | 2025-06-02 A |  | 0% → 100% | 0d → none |  | resources Desenvolvedor Frontend; Desenvolvedor Java Pleno; Desenvolvedor Java Senior; Gerente de projeto; Product Owner; Scrum Master; UX Designer → Desenvolvedor Frontend; Desenvolvedor Java Pleno; Desenvolvedor Java Senior; Product Owner; Scrum Master; UX Designer; Gerente do projeto; baseline start none → 2025-06-02; baseline finish none → 2025-06-02 |
| 17 | Retrospectiva da Sprint (Sprint Retrospective) | 2025-06-02 A | 2025-06-02 A |  | 0% → 100% | 0d → none |  | resources Desenvolvedor Frontend; Desenvolvedor Java Pleno; Desenvolvedor Java Senior; Gerente de projeto; Product Owner; Scrum Master; UX Designer → Desenvolvedor Frontend; Desenvolvedor Java Pleno; Desenvolvedor Java Senior; Product Owner; Scrum Master; UX Designer; Gerente do projeto; baseline start none → 2025-06-02; baseline finish none → 2025-06-02 |
| 18 | **Sprint 2** | 2025-06-03 A | 2025-06-11 → 2025-06-13 A (+2d) | 7d → 9d | 0% → 100% | 0d → none |  | baseline start none → 2025-06-03; baseline finish none → 2025-06-13 |
| 19 | Planejar a Sprint (Sprint Planning) | 2025-06-03 A | 2025-06-03 A |  | 0% → 100% | 6d → none |  | resources Desenvolvedor Java Pleno; Desenvolvedor Java Senior; Gerente de projeto; Product Owner; Scrum Master; UX Designer; Desenvolvedor Frontend → Desenvolvedor Java Pleno; Desenvolvedor Java Senior; Product Owner; Scrum Master; UX Designer; Desenvolvedor Frontend; Gerente do projeto; baseline start none → 2025-06-03; baseline finish none → 2025-06-03 |
| 20 | Executar a sprint | 2025-06-03 → 2025-06-04 A (+1d) | 2025-06-11 → 2025-06-12 A (+1d) |  | 0% → 100% | 0d → none | none → 19 | resources Desenvolvedor Frontend; Desenvolvedor Java Pleno; Desenvolvedor Java Senior; Gerente de projeto; Scrum Master; UX Designer → Desenvolvedor Frontend; Desenvolvedor Java Pleno; Desenvolvedor Java Senior; Scrum Master; UX Designer; Gerente do projeto; baseline start none → 2025-06-04; baseline finish none → 2025-06-12 |
| 21 | Revisão da Sprint (Sprint Review) | 2025-06-03 → 2025-06-13 A (+10d) | 2025-06-03 → 2025-06-13 A (+10d) |  | 0% → 100% | 7.5d → none | none → 20 | resources Desenvolvedor Frontend; Desenvolvedor Java Pleno; Desenvolvedor Java Senior; Gerente de projeto; Product Owner; Scrum Master; UX Designer → Desenvolvedor Frontend; Desenvolvedor Java Pleno; Desenvolvedor Java Senior; Product Owner; Scrum Master; UX Designer; Gerente do projeto; baseline start none → 2025-06-13; baseline finish none → 2025-06-13 |
| 22 | Retrospectiva da Sprint (Sprint Retrospective) | 2025-06-03 → 2025-06-13 A (+10d) | 2025-06-03 → 2025-06-13 A (+10d) |  | 0% → 100% | 7.5d → none | none → 21 | resources Desenvolvedor Frontend; Desenvolvedor Java Pleno; Desenvolvedor Java Senior; Gerente de projeto; Product Owner; Scrum Master; UX Designer → Desenvolvedor Frontend; Desenvolvedor Java Pleno; Desenvolvedor Java Senior; Product Owner; Scrum Master; UX Designer; Gerente do projeto; baseline start none → 2025-06-13; baseline finish none → 2025-06-13 |
| 23 | **Sprint 3** | 2025-06-12 → 2025-06-16 A (+4d) | 2025-06-19 → 2025-06-25 A (+6d) | 6d → 8d | 0% → 100% | 1d → none |  | baseline start none → 2025-06-16; baseline finish none → 2025-06-25 |
| 24 | Planejar a Sprint (Sprint Planning) | 2025-06-12 → 2025-06-16 A (+4d) | 2025-06-12 → 2025-06-16 A (+4d) |  | 0% → 100% | 6d → none |  | resources Desenvolvedor Frontend; Desenvolvedor Java Pleno; Desenvolvedor Java Senior; Gerente de projeto; Product Owner; Scrum Master; UX Designer → Desenvolvedor Frontend; Desenvolvedor Java Pleno; Desenvolvedor Java Senior; Product Owner; Scrum Master; UX Designer; Gerente do projeto; baseline start none → 2025-06-16; baseline finish none → 2025-06-16 |
| 25 | Executar a sprint | 2025-06-12 → 2025-06-17 A (+5d) | 2025-06-19 → 2025-06-24 A (+5d) |  | 0% → 100% | 1d → none | none → 24 | resources Desenvolvedor Frontend; Desenvolvedor Java Pleno; Desenvolvedor Java Senior; Gerente de projeto; Scrum Master; UX Designer → Desenvolvedor Frontend; Desenvolvedor Java Pleno; Desenvolvedor Java Senior; Scrum Master; UX Designer; Gerente do projeto; baseline start none → 2025-06-17; baseline finish none → 2025-06-24 |
| 26 | Revisão da Sprint (Sprint Review) | 2025-06-12 → 2025-06-25 A (+13d) | 2025-06-12 → 2025-06-25 A (+13d) |  | 0% → 100% | 6.5d → none | none → 25 | resources Desenvolvedor Frontend; Desenvolvedor Java Pleno; Desenvolvedor Java Senior; Gerente de projeto; Product Owner; Scrum Master; UX Designer → Desenvolvedor Frontend; Desenvolvedor Java Pleno; Desenvolvedor Java Senior; Product Owner; Scrum Master; UX Designer; Gerente do projeto; baseline start none → 2025-06-25; baseline finish none → 2025-06-25 |
| 27 | Retrospectiva da Sprint (Sprint Retrospective) | 2025-06-12 → 2025-06-25 A (+13d) | 2025-06-12 → 2025-06-25 A (+13d) |  | 0% → 100% | 6.5d → none | none → 26 | resources Desenvolvedor Frontend; Desenvolvedor Java Pleno; Desenvolvedor Java Senior; Gerente de projeto; Product Owner; Scrum Master; UX Designer → Desenvolvedor Frontend; Desenvolvedor Java Pleno; Desenvolvedor Java Senior; Product Owner; Scrum Master; UX Designer; Gerente do projeto; baseline start none → 2025-06-25; baseline finish none → 2025-06-25 |
| 28 | **Sprint 4** | 2025-06-04 → 2025-06-26 A (+22d) | 2025-06-12 → 2025-07-08 (+26d) | 7d → 9d | 0% → 67% | 6d → 1d | 19 → 23 | baseline start none → 2025-06-26; baseline finish none → 2025-07-08 |
| 29 | Planejar a Sprint (Sprint Planning) | 2025-06-04 → 2025-06-26 A (+22d) | 2025-06-04 → 2025-06-26 A (+22d) |  | 0% → 100% | 12d → none |  | resources Desenvolvedor Frontend; Desenvolvedor Java Pleno; Desenvolvedor Java Senior; Gerente de projeto; Product Owner; Scrum Master; UX Designer → Desenvolvedor Frontend; Desenvolvedor Java Pleno; Desenvolvedor Java Senior; Product Owner; Scrum Master; UX Designer; Gerente do projeto; baseline start none → 2025-06-26; baseline finish none → 2025-06-26 |
| 30 | Executar a sprint | 2025-06-04 → 2025-06-27 A (+23d) | 2025-06-12 → 2025-07-07 (+25d) |  | 0% → 71% | 6d → 1d | none → 29 | resources Desenvolvedor Frontend; Desenvolvedor Java Pleno; Desenvolvedor Java Senior; Gerente de projeto; Scrum Master; UX Designer → Desenvolvedor Frontend; Desenvolvedor Java Pleno; Desenvolvedor Java Senior; Scrum Master; UX Designer; Gerente do projeto; baseline start none → 2025-06-27; baseline finish none → 2025-07-07 |
| 31 | Revisão da Sprint (Sprint Review) | 2025-06-04 → 2025-07-08 (+34d) | 2025-06-04 → 2025-07-08 (+34d) |  |  | 12.5d → 1d | none → 30 | resources Desenvolvedor Frontend; Desenvolvedor Java Pleno; Desenvolvedor Java Senior; Gerente de projeto; Product Owner; Scrum Master; UX Designer → Desenvolvedor Frontend; Desenvolvedor Java Pleno; Desenvolvedor Java Senior; Product Owner; Scrum Master; UX Designer; Gerente do projeto; baseline start none → 2025-07-08; baseline finish none → 2025-07-08 |
| 32 | Retrospectiva da Sprint (Sprint Retrospective) | 2025-06-04 → 2025-07-08 (+34d) | 2025-06-04 → 2025-07-08 (+34d) |  |  | 12.5d → 1d | none → 31 | resources Desenvolvedor Frontend; Desenvolvedor Java Pleno; Desenvolvedor Java Senior; Gerente de projeto; Product Owner; Scrum Master; UX Designer → Desenvolvedor Frontend; Desenvolvedor Java Pleno; Desenvolvedor Java Senior; Product Owner; Scrum Master; UX Designer; Gerente do projeto; baseline start none → 2025-07-08; baseline finish none → 2025-07-08 |
| 33 | **Sprint 5** | 2025-06-12 → 2025-07-09 (+27d) | 2025-06-20 → 2025-07-21 (+31d) | 7d → 9d |  | 0d → 1d | 20 → 28 | baseline start none → 2025-07-09; baseline finish none → 2025-07-21 |
| 34 | Planejar a Sprint (Sprint Planning) | 2025-06-12 → 2025-07-09 (+27d) | 2025-06-12 → 2025-07-09 (+27d) |  |  | 6d → 1d |  | resources Desenvolvedor Frontend; Desenvolvedor Java Pleno; Desenvolvedor Java Senior; Gerente de projeto; Product Owner; Scrum Master; UX Designer → Desenvolvedor Frontend; Desenvolvedor Java Pleno; Desenvolvedor Java Senior; Product Owner; Scrum Master; UX Designer; Gerente do projeto; baseline start none → 2025-07-09; baseline finish none → 2025-07-09 |
| 35 | Executar a sprint | 2025-06-12 → 2025-07-10 (+28d) | 2025-06-20 → 2025-07-18 (+28d) |  |  | 0d → 1d | none → 34 | resources Desenvolvedor Frontend; Desenvolvedor Java Pleno; Desenvolvedor Java Senior; Gerente de projeto; Scrum Master; UX Designer → Desenvolvedor Frontend; Desenvolvedor Java Pleno; Desenvolvedor Java Senior; Scrum Master; UX Designer; Gerente do projeto; baseline start none → 2025-07-10; baseline finish none → 2025-07-18 |
| 36 | Revisão da Sprint (Sprint Review) | 2025-06-12 → 2025-07-21 (+39d) | 2025-06-12 → 2025-07-21 (+39d) |  |  | 6.5d → 1d | none → 35 | resources Desenvolvedor Frontend; Desenvolvedor Java Pleno; Desenvolvedor Java Senior; Gerente de projeto; Product Owner; Scrum Master; UX Designer → Desenvolvedor Frontend; Desenvolvedor Java Pleno; Desenvolvedor Java Senior; Product Owner; Scrum Master; UX Designer; Gerente do projeto; baseline start none → 2025-07-21; baseline finish none → 2025-07-21 |
| 37 | Retrospectiva da Sprint (Sprint Retrospective) | 2025-06-12 → 2025-07-21 (+39d) | 2025-06-12 → 2025-07-21 (+39d) |  |  | 6.5d → 1d | none → 36 | resources Desenvolvedor Frontend; Desenvolvedor Java Pleno; Desenvolvedor Java Senior; Gerente de projeto; Product Owner; Scrum Master; UX Designer → Desenvolvedor Frontend; Desenvolvedor Java Pleno; Desenvolvedor Java Senior; Product Owner; Scrum Master; UX Designer; Gerente do projeto; baseline start none → 2025-07-21; baseline finish none → 2025-07-21 |
| 38 | **Controle** | 2025-05-06 → 2025-05-21 (+15d) | 2025-05-06 → 2025-07-22 (+77d) | 1d? → 45d |  | 33d → 0d | none → 4 | baseline start none → 2025-05-21; baseline finish none → 2025-07-22 |
| 39 | **Cronograma** | 2025-05-06 → 2025-05-26 (+20d) | 2025-05-06 → 2025-07-21 (+76d) | 1d? → 41d |  | 33d → 1d |  | was named Tempo; baseline start none → 2025-05-26; baseline finish none → 2025-07-21 |
| 50 | **Comunicação** | 2025-05-06 → 2025-05-27 (+21d) | 2025-05-06 → 2025-07-22 (+77d) | 1d? → 41d |  | 33d → 0d |  | baseline start none → 2025-05-27; baseline finish none → 2025-07-22 |
| 61 | **Riscos** | 2025-05-06 → 2025-05-21 (+15d) | 2025-05-06 → 2025-07-16 (+71d) | 1d? → 41d |  | 33d → 4d |  | baseline start none → 2025-05-21; baseline finish none → 2025-07-16 |
| 72 | **Encerramento** |  | 2025-05-06 → 2025-05-07 (+1d) | 1d → 2d |  | 33d → 54d |  | baseline start none → 2025-07-23; baseline finish none → 2025-07-24 |
| 73 | Elaborar o Termo de Encerramento do Projeto |  |  |  |  | 33d → 54d |  | baseline start none → 2025-07-23; baseline finish none → 2025-07-23 |
| 74 | Aprovar o Termo de Encerramento do Projeto | 2025-05-06 → 2025-05-07 (+1d) | 2025-05-06 → 2025-05-07 (+1d) |  |  | 33d → 54d | none → 73 | baseline start none → 2025-07-24; baseline finish none → 2025-07-24 |

## Version 3 (data date 2025-06-16, saved 2025-07-04, file Projeto Gestão de Campanhas.mpp)

Last finish 2025-07-22 → 2025-07-24 (+2d). Complete tasks 21 → 14.

Added:

| ID | Task | Duration | Start | Finish | Resources |
| --- | --- | --- | --- | --- | --- |
| 2 | Elaborar termo de abertura do projeto | 2d | 2025-05-06 A | 2025-05-07 A | Gerente do projeto [50%] |
| 11 | **Execução e Controle** | 46d | 2025-05-21 A | 2025-07-24 |  |

Removed: 2 Elaborar Termo de Abertura do projeto; 11 Execução de Controle

Changed:

| ID | Task | Start | Finish | Duration | Complete | Total float | Predecessors | Other |
| --- | --- | --- | --- | --- | --- | --- | --- | --- |
| 3 | Aprovar termo de abertura do projeto |  |  |  |  |  | Elaborar Termo de Abertura do projetoSS → 2SS |  |
| 4 | **Planejamento** |  | 2025-05-20 A → 2025-05-21 A (+1d) | 9d → 10d |  |  |  |  |
| 8 | Preparar estrutura para a equipe |  | 2025-05-15 A → 2025-05-16 A (+1d) | 3d → 4d |  |  |  |  |
| 9 | Realizar contratações | 2025-05-16 A → 2025-05-19 A (+3d) | 2025-05-19 A → 2025-05-20 A (+1d) |  |  |  |  |  |
| 10 | Elaborar e priorizar o Backlog do Produto (Product Backlog) | 2025-05-20 A → 2025-05-21 A (+1d) | 2025-05-20 A → 2025-05-21 A (+1d) |  |  |  |  |  |
| 12 | **Execução** | 2025-05-21 A → 2025-05-22 A (+1d) | 2025-07-21 → 2025-07-24 (+3d) | 44d → 46d | 73% → 37% | 1d → 0d |  | baseline finish 2025-07-21 → 2025-07-22 |
| 13 | **Sprint 1** | 2025-05-21 A → 2025-05-22 A (+1d) | 2025-06-02 A → 2025-06-03 A (+1d) |  |  |  |  |  |
| 14 | Planejar a Sprint (Sprint Planning) | 2025-05-21 A → 2025-05-22 A (+1d) | 2025-05-21 A → 2025-05-22 A (+1d) |  |  |  |  |  |
| 15 | Executar a sprint | 2025-05-22 A → 2025-05-23 A (+1d) | 2025-05-30 A → 2025-06-02 A (+3d) |  |  |  |  |  |
| 16 | Revisão da Sprint (Sprint Review) | 2025-06-02 A → 2025-06-03 A (+1d) | 2025-06-02 A → 2025-06-03 A (+1d) |  |  |  |  |  |
| 17 | Retrospectiva da Sprint (Sprint Retrospective) | 2025-06-02 A → 2025-06-03 A (+1d) | 2025-06-02 A → 2025-06-03 A (+1d) |  |  |  |  |  |
| 18 | **Sprint 2** | 2025-06-03 A → 2025-06-04 A (+1d) | 2025-06-13 A → 2025-06-16 (+3d) |  | 100% → 89% | none → 0d |  |  |
| 19 | Planejar a Sprint (Sprint Planning) | 2025-06-03 A → 2025-06-04 A (+1d) | 2025-06-03 A → 2025-06-04 A (+1d) |  |  |  |  | resources Desenvolvedor Java Pleno; Desenvolvedor Java Senior; Product Owner; Scrum Master; UX Designer; Desenvolvedor Frontend; Gerente do projeto → Desenvolvedor Frontend; Desenvolvedor Java Pleno; Desenvolvedor Java Senior; Product Owner; Scrum Master; UX Designer; Gerente do projeto |
| 20 | Executar a sprint | 2025-06-04 A → 2025-06-05 A (+1d) | 2025-06-12 A → 2025-06-13 A (+1d) |  |  |  |  |  |
| 21 | Revisão da Sprint (Sprint Review) | 2025-06-25 A → 2025-06-16 (-9d) | 2025-06-25 A → 2025-06-16 (-9d) |  | 100% → 0% | none → 0d | 25 → 20 | baseline start 2025-06-25 → 2025-06-13; baseline finish 2025-06-25 → 2025-06-13 |
| 22 | Retrospectiva da Sprint (Sprint Retrospective) | 2025-06-13 A → 2025-06-16 (+3d) | 2025-06-13 A → 2025-06-16 (+3d) |  | 100% → 0% | none → 0d | 36 → 21 |  |
| 23 | **Sprint 3** | 2025-06-16 A → 2025-06-17 (+1d) | 2025-06-25 A → 2025-06-27 (+2d) | 8d → 9d | 100% → 0% | none → 0d |  | baseline finish 2025-06-25 → 2025-06-26 |
| 24 | Planejar a Sprint (Sprint Planning) | 2025-06-16 A → 2025-06-17 (+1d) | 2025-06-16 A → 2025-06-17 (+1d) |  | 100% → 0% | none → 0d |  |  |
| 25 | Executar a sprint | 2025-06-17 A → 2025-06-18 (+1d) | 2025-06-24 A → 2025-06-26 (+2d) | 6d → 7d | 100% → 0% | none → 0d |  | baseline finish 2025-06-24 → 2025-06-25 |
| 26 | Revisão da Sprint (Sprint Review) | 2025-07-08 → 2025-06-27 (-11d) | 2025-07-08 → 2025-06-27 (-11d) |  |  | 1d → 0d | 30 → 25 | baseline start 2025-07-08 → 2025-06-26; baseline finish 2025-07-08 → 2025-06-26 |
| 27 | Retrospectiva da Sprint (Sprint Retrospective) | 2025-06-25 A → 2025-06-27 (+2d) | 2025-06-25 A → 2025-06-27 (+2d) |  | 100% → 0% | none → 0d | 21 → 26 | baseline start 2025-06-25 → 2025-06-26; baseline finish 2025-06-25 → 2025-06-26 |
| 28 | **Sprint 4** | 2025-06-26 A → 2025-06-30 (+4d) | 2025-07-08 → 2025-07-11 (+3d) | 9d → 10d | 67% → 0% | 1d → 0d |  | baseline start 2025-06-26 → 2025-06-27; baseline finish 2025-07-08 → 2025-07-09 |
| 29 | Planejar a Sprint (Sprint Planning) | 2025-06-26 A → 2025-06-30 (+4d) | 2025-06-26 A → 2025-06-30 (+4d) |  | 100% → 0% | none → 0d |  | baseline start 2025-06-26 → 2025-06-27; baseline finish 2025-06-26 → 2025-06-27 |
| 30 | Executar a sprint | 2025-06-27 A → 2025-07-01 (+4d) | 2025-07-07 → 2025-07-10 (+3d) | 7d → 8d | 71% → 0% | 1d → 0d |  | constraint none → finish no earlier than 2025-07-10; baseline start 2025-06-27 → 2025-06-30; baseline finish 2025-07-07 → 2025-07-08 |
| 31 | Revisão da Sprint (Sprint Review) | 2025-07-21 → 2025-07-11 (-10d) | 2025-07-21 → 2025-07-11 (-10d) |  |  | 1d → 0d | 35 → 30 | baseline start 2025-07-21 → 2025-07-09; baseline finish 2025-07-21 → 2025-07-09 |
| 32 | Retrospectiva da Sprint (Sprint Retrospective) | 2025-07-08 → 2025-07-11 (+3d) | 2025-07-08 → 2025-07-11 (+3d) |  |  | 1d → 0d | 26 → 31 | baseline start 2025-07-08 → 2025-07-09; baseline finish 2025-07-08 → 2025-07-09 |
| 33 | **Sprint 5** | 2025-07-09 → 2025-07-14 (+5d) | 2025-07-21 → 2025-07-24 (+3d) |  |  | 1d → 0d |  | baseline start 2025-07-09 → 2025-07-10; baseline finish 2025-07-21 → 2025-07-22 |
| 34 | Planejar a Sprint (Sprint Planning) | 2025-07-09 → 2025-07-14 (+5d) | 2025-07-09 → 2025-07-14 (+5d) |  |  | 1d → 0d |  | baseline start 2025-07-09 → 2025-07-10; baseline finish 2025-07-09 → 2025-07-10 |
| 35 | Executar a sprint | 2025-07-10 → 2025-07-15 (+5d) | 2025-07-18 → 2025-07-23 (+5d) |  |  | 1d → 0d |  | baseline start 2025-07-10 → 2025-07-11; baseline finish 2025-07-18 → 2025-07-21 |
| 36 | Revisão da Sprint (Sprint Review) | 2025-06-13 A → 2025-07-24 (+41d) | 2025-06-13 A → 2025-07-24 (+41d) |  | 100% → 0% | none → 0d | 20 → 35 | baseline start 2025-06-13 → 2025-07-22; baseline finish 2025-06-13 → 2025-07-22 |
| 37 | Retrospectiva da Sprint (Sprint Retrospective) | 2025-07-21 → 2025-07-24 (+3d) | 2025-07-21 → 2025-07-24 (+3d) |  |  | 1d → 0d | 31 → 36 | baseline start 2025-07-21 → 2025-07-22; baseline finish 2025-07-21 → 2025-07-22 |
| 38 | **Controle** |  |  | 45d → 44d |  | 0d → 2d |  |  |
| 61 | **Riscos** |  |  | 41d → 40d |  | 4d → 6d |  |  |
| 62 | **Revisar plano de gerenciamento de riscos** |  |  | 41d → 40d |  | 4d → 6d |  |  |
| 63 | Revisar plano de gerenciamento de riscos 1 |  | 2025-05-21 → 2025-05-22 (+1d) |  |  | 44d → 45d |  |  |
| 72 | **Encerramento** | 2025-05-06 → 2025-07-17 (+72d) | 2025-05-07 → 2025-07-18 (+72d) |  |  | 54d → 4d | none → 11 |  |
| 73 | Elaborar o Termo de Encerramento do Projeto | 2025-05-06 → 2025-07-17 (+72d) | 2025-05-06 → 2025-07-17 (+72d) |  |  | 54d → 4d |  | constraint none → start no earlier than 2025-07-17; resources none → Gerente do projeto |
| 74 | Aprovar o Termo de Encerramento do Projeto | 2025-05-07 → 2025-07-18 (+72d) | 2025-05-07 → 2025-07-18 (+72d) |  |  | 54d → 4d |  | resources none → Patrocinador; Gerente do projeto |
